# 自动驾驶管理系统

Schedule from a web Gantt chart, 2026-03-19 to 2026-05-08.
Every day is a working day
武汉AVP管理系统

## Schedule

| ID | WBS | Task | Duration | Start | Finish |
| --- | --- | --- | --- | --- | --- |
| 2 | 1 | **AVP平台** | 51d | 2026-03-19 | 2026-05-08 |
| 3 | 1.1 | **代客泊车预约系统 （移动端）** | 25d | 2026-04-06 | 2026-04-30 |
| 4 | 1.1.1 | **首页** | 18d | 2026-04-06 | 2026-04-23 |
| 5 | 1.1.1.1 | 登录注册 | 2d | 2026-04-06 | 2026-04-07 |
| 6 | 1.1.1.2 | 用户定位展示 | 2d | 2026-04-07 | 2026-04-08 |
| 7 | 1.1.1.3 | 车辆定位展示 | 2d | 2026-04-09 | 2026-04-10 |
| 8 | 1.1.1.4 | 停车场分布展示 | 2d | 2026-04-13 | 2026-04-14 |
| 9 | 1.1.1.5 | 车辆状态展示 | 3d | 2026-04-15 | 2026-04-17 |
| 10 | 1.1.1.6 | 一键泊车 | 5d | 2026-04-17 | 2026-04-21 |
| 11 | 1.1.1.7 | 一键召车 | 5d | 2026-04-17 | 2026-04-21 |
| 12 | 1.1.1.8 | 过程跟踪 | 3d | 2026-04-21 | 2026-04-23 |
| 13 | 1.1.2 | **个人中心** | 8d | 2026-04-23 | 2026-04-30 |
| 14 | 1.1.2.1 | 车辆管理 | 2d | 2026-04-23 | 2026-04-24 |
| 15 | 1.1.2.2 | 预警管理 | 2d | 2026-04-25 | 2026-04-26 |
| 16 | 1.1.2.3 | 泊车记录 | 2d | 2026-04-27 | 2026-04-28 |
| 17 | 1.1.2.4 | 召车记录 | 2d | 2026-04-29 | 2026-04-30 |
| 18 | 1.2 | **代客泊车管理系统 （web端）** | 33d | 2026-03-19 | 2026-04-20 |
| 19 | 1.2.1 | **首页概要** | 7d | 2026-03-19 | 2026-03-25 |
| 20 | 1.2.1.1 | 停车场统计信息 | 1d | 2026-03-19 | 2026-03-19 |
| 21 | 1.2.1.2 | 客户统计信息 | 1d | 2026-03-20 | 2026-03-20 |
| 22 | 1.2.1.3 | 车辆统计信息 | 1d | 2026-03-21 | 2026-03-21 |
| 23 | 1.2.1.4 | 停车场3D可视化 | 1d | 2026-03-22 | 2026-03-22 |
| 24 | 1.2.1.5 | 可预约车位信息 | 1d | 2026-03-23 | 2026-03-23 |
| 25 | 1.2.1.6 | 在场AVP车辆信息 | 1d | 2026-03-24 | 2026-03-24 |
| 26 | 1.2.1.7 | 在场AVP车辆预警信息 | 1d | 2026-03-25 | 2026-03-25 |
| 27 | 1.2.2 | 预约管理 | 1d | 2026-03-26 | 2026-03-26 |

| ID | WBS | Task | Duration | Start | Finish |
| --- | --- | --- | --- | --- | --- |
| 28 | 1.2.3 | **场端管理** | 6d | 2026-03-27 | 2026-04-01 |
| 29 | 1.2.3.1 | 停车场管理 | 1d | 2026-03-27 | 2026-03-27 |
| 30 | 1.2.3.2 | 出入口管理 | 1d | 2026-03-28 | 2026-03-28 |
| 31 | 1.2.3.3 | 停车楼层管理 | 1d | 2026-03-29 | 2026-03-29 |
| 32 | 1.2.3.4 | 停车区域管理 | 1d | 2026-03-30 | 2026-03-30 |
| 33 | 1.2.3.5 | 停车位管理 | 1d | 2026-03-31 | 2026-03-31 |
| 34 | 1.2.3.6 | 道闸管理 | 1d | 2026-04-01 | 2026-04-01 |
| 35 | 1.2.4 | **地图管理** | 3d | 2026-04-02 | 2026-04-04 |
| 36 | 1.2.4.1 | 高精地图管理 | 2d | 2026-04-02 | 2026-04-03 |
| 37 | 1.2.4.2 | 特征地图管理 | 2d | 2026-04-03 | 2026-04-04 |
| 38 | 1.2.5 | **客户管理** | 2d | 2026-04-05 | 2026-04-06 |
| 39 | 1.2.5.1 | 泊车用户管理 | 1d | 2026-04-05 | 2026-04-05 |
| 40 | 1.2.5.2 | 泊车客户管理 | 1d | 2026-04-06 | 2026-04-06 |
| 41 | 1.2.6 | 车辆管理 | 1d | 2026-04-07 | 2026-04-07 |
| 42 | 1.2.7 | 预警管理 | 1d | 2026-04-08 | 2026-04-08 |
| 43 | 1.2.8 | **算法模块** | 5d | 2026-04-09 | 2026-04-13 |
| 44 | 1.2.8.1 | 路径规划算法 | 3d | 2026-04-09 | 2026-04-11 |
| 45 | 1.2.8.2 | 泊位分配算法 | 3d | 2026-04-11 | 2026-04-13 |
| 46 | 1.2.9 | **信息发布模块** | 3d | 2026-04-13 | 2026-04-15 |
| 47 | 1.2.9.1 | 路径信息发布 | 2d | 2026-04-13 | 2026-04-14 |
| 48 | 1.2.9.2 | 泊位信息发布 | 2d | 2026-04-14 | 2026-04-15 |
| 49 | 1.2.9.3 | 预警信息发布 | 2d | 2026-04-14 | 2026-04-15 |
| 50 | 1.2.10 | **地图处理模块** | 5d | 2026-04-16 | 2026-04-20 |
| 51 | 1.2.10.1 | 地图解析 | 3d | 2026-04-16 | 2026-04-18 |
| 52 | 1.2.10.2 | 地图渲染 | 3d | 2026-04-18 | 2026-04-20 |

| ID | WBS | Task | Duration | Start | Finish |
| --- | --- | --- | --- | --- | --- |
| 53 | 1.3 | **信息服务系统 （web端）** | 31d | 2026-03-27 | 2026-04-26 |
| 54 | 1.3.1 | **Map地图云服务** | 5d | 2026-04-20 | 2026-04-24 |
| 55 | 1.3.1.1 | 地图概览 | 1d | 2026-04-20 | 2026-04-20 |
| 56 | 1.3.1.2 | 地图分组 | 1d | 2026-04-21 | 2026-04-21 |
| 57 | 1.3.1.3 | 导入地图 | 1d | 2026-04-22 | 2026-04-22 |
| 58 | 1.3.1.4 | 导出地图 | 1d | 2026-04-23 | 2026-04-23 |
| 59 | 1.3.1.5 | 地图下发 | 1d | 2026-04-24 | 2026-04-24 |
| 60 | 1.3.2 | **交通事件管理** | 2d | 2026-04-24 | 2026-04-25 |
| 61 | 1.3.2.1 | 事件动态管理 | 1d | 2026-04-24 | 2026-04-24 |
| 62 | 1.3.2.2 | 事件发布记录 | 1d | 2026-04-25 | 2026-04-25 |
| 63 | 1.3.2.3 | 自动转发规则 | 1d | 2026-04-25 | 2026-04-25 |
| 64 | 1.3.3 | **标志标牌管理** | 31d | 2026-03-27 | 2026-04-26 |
| 65 | 1.3.3.1 | 标志标牌资源概览 | 1d | 2026-04-26 | 2026-04-26 |
| 66 | 1.3.3.2 | 导入标志标牌资源 | 1d | 2026-03-27 | 2026-03-27 |
| 67 | 1.3.3.3 | 标志标牌任务下发 | 1d | 2026-03-28 | 2026-03-28 |
| 68 | 1.4 | **应用管理系统 （web端）** | 11d | 2026-04-28 | 2026-05-08 |
| 69 | 1.4.1 | **统一账户管理** | 3d | 2026-04-28 | 2026-04-30 |
| 70 | 1.4.1.1 | 组织管理 | 1d | 2026-04-28 | 2026-04-28 |
| 71 | 1.4.1.2 | 用户管理 | 1d | 2026-04-29 | 2026-04-29 |
| 72 | 1.4.1.3 | 角色管理 | 1d | 2026-04-30 | 2026-04-30 |
| 73 | 1.4.2 | **设备接入管理** | 8d | 2026-05-01 | 2026-05-08 |
| 74 | 1.4.2.1 | 设备类型管理 | 2d | 2026-05-01 | 2026-05-02 |
| 75 | 1.4.2.2 | 产品管理 | 3d | 2026-05-03 | 2026-05-05 |
| 76 | 1.4.2.3 | 设备管理 | 3d | 2026-05-05 | 2026-05-07 |
| 77 | 1.4.2.4 | 协议管理 | 1d | 2026-05-08 | 2026-05-08 |

| ID | WBS | Task | Duration | Start | Finish |
| --- | --- | --- | --- | --- | --- |
| 78 | 2 | **路侧融合感知系统** | 48d | 2026-03-19 | 2026-05-05 |
| 79 | 2.1 | 感知子系统 | 13d | 2026-03-19 | 2026-03-31 |
| 80 | 2.2 | 边缘计算子系统 | 18d | 2026-03-31 | 2026-04-17 |
| 81 | 2.3 | 传输子系统 | 19d | 2026-04-17 | 2026-05-05 |
| 82 | 3 | **高精地图** | 24d | 2026-03-19 | 2026-04-11 |
| 83 | 3.1 | 采集范围 | 2d | 2026-04-01 | 2026-04-02 |
| 84 | 3.2 | 地图要素 | 3d | 2026-04-03 | 2026-04-05 |
| 85 | 3.3 | 数据结构 | 6d | 2026-04-06 | 2026-04-11 |
| 86 | 3.4 | 数据格式 | 1d | 2026-03-19 | 2026-03-19 |
| 87 | 3.5 | 数据精度 | 1d | 2026-03-19 | 2026-03-19 |
